# Gestion Cartera

Schedule from MS Project, 2018-02-15 to 2018-09-14, A marks actual dates.
Toshiba

## Calendars

- Standard: Mon-Fri 08:00-12:00, 13:00-17:00; Sat-Sun off.

## Resources

| Resource |
| --- |
| Luis, Hugo |
| Hugo,William |
| Hugo, Willima |
| Andres |
| Hugo |
| Hugo, Luis, William |

## Schedule

| ID | WBS | Task | Type | Duration | Start | Finish | Predecessors | Complete | Remaining | Total slack | Free slack | Constraint | Resources | Work | Actual work |
| --- | --- | --- | --- | --- | --- | --- | --- | --- | --- | --- | --- | --- | --- | --- | --- |
| 1 | 1 | **Sistema gestion de cartera** |  | 152d | 2018-02-15 A | 2018-09-14 |  | 3% | 147.87d | 0d |  |  |  | 180.8h | 36h |
| 2 | 1.1 | **Iteracion 1** |  | 19d | 2018-02-15 A | 2018-03-13 |  | 20% | 15.22d | 133d |  |  |  | 180.8h | 36h |
| 3 | 1.1.1 | Reunion defincion actividades | manual | 1d | 2018-02-15 A | 2018-02-15 A |  | 100% |  |  |  |  | Luis, Hugo | 8h | 8h |
| 4 | 1.1.2 | Definicion de arquitectura | manual | 1d | 2018-02-16 A | 2018-02-16 A | 3 | 100% |  |  |  |  | Hugo,William | 8h | 8h |
| 5 | 1.1.3 | Metodologia de trabajo | manual | 1d | 2018-02-19 A | 2018-02-19 A | 4 | 100% |  |  |  |  | Hugo,William | 8h | 8h |
| 6 | 1.1.4 | **Construccion de iteracion** |  | 14d | 2018-02-20 A | 2018-03-09 | 5 | 9% | 12.81d | 135d |  |  |  | 140.8h | 12h |
| 7 | 1.1.4.1 | Inicio de sesion |  | 5d | 2018-02-20 A | 2018-02-26 | 4 | 10% | 4.5d | 135.9d | 0d | start no earlier than 2018-02-19 | Andres | 40h | 4h |
| 8 | 1.1.4.2 | Modulos asignados |  | 1d | 2018-02-27 A | 2018-02-27 | 7 | 10% | 0.9d | 135.8d | 0d |  | Andres | 8h | 0.8h |
| 9 | 1.1.4.3 | Opciones habilitadas |  | 1d | 2018-02-28 A | 2018-02-28 | 8 | 10% | 0.9d | 135.7d | 0d |  | Andres | 8h | 0.8h |
| 10 | 1.1.4.4 | Generacion en SDF recaudo externo - liquidacion detallada |  | 0.3d | 2018-03-05 | 2018-03-05 | 4 |  |  | 136.4d | 0d | start no earlier than 2018-03-05 | Hugo | 2.4h |  |
| 11 | 1.1.4.5 | Generacion en SDF recaudo externo - distribucion |  | 0.3d | 2018-03-05 | 2018-03-05 | 10 |  |  | 136.4d | 0d |  | Hugo | 2.4h |  |
| 12 | 1.1.4.6 | Generacion en SDF recaudo externo - pago OT |  | 0.3d | 2018-03-05 | 2018-03-05 | 11 |  |  | 136.4d | 0d | start no earlier than 2018-03-05 | Hugo | 2.4h |  |
| 13 | 1.1.4.7 | Generacion en SDF recaudo local - detalle |  | 0.3d | 2018-03-05 | 2018-03-06 | 12 |  |  | 136.4d | 0d | start no earlier than 2018-03-05 | Hugo | 2.4h |  |
| 14 | 1.1.4.8 | Generacion en SDF recaudo local - transferencias mensual |  | 0.3d | 2018-03-06 | 2018-03-06 | 13 |  |  | 136.4d | 0d |  | Hugo | 2.4h |  |
| 15 | 1.1.4.9 | Transmitir archivos de SIMIT a SEVIAL |  | 0.3d | 2018-03-06 | 2018-03-06 | 14 |  |  | 136.4d | 0d | start no earlier than 2018-03-06 | Hugo | 2.4h |  |
| 16 | 1.1.4.10 | Procesar cargue de archivos |  | 3d | 2018-03-01 A | 2018-03-05 | 9 | 10% | 2.7d | 135.4d | 0d |  | Andres | 24h | 2.4h |
| 17 | 1.1.4.11 | Cargue de informacion Recaudo externo - liquidacion detallada |  | 0.3d | 2018-03-06 | 2018-03-07 | 15 |  |  | 136.4d | 0d |  | Hugo | 2.4h |  |
| 18 | 1.1.4.12 | Cargue de informacion Recaudo externo - distribucion |  | 0.3d | 2018-03-07 | 2018-03-07 | 17 |  |  | 136.4d | 0d | start no earlier than 2018-03-07 | Hugo | 2.4h |  |
| 19 | 1.1.4.13 | Cargue de informacion Recaudo externo -pago OT |  | 0.3d | 2018-03-07 | 2018-03-07 | 18 |  |  | 136.4d | 0.3d |  | Hugo | 2.4h |  |
| 20 | 1.1.4.14 | Cargue de informacion Recaudo local - detalle |  | 0.3d | 2018-03-08 | 2018-03-08 | 19 |  |  | 136.1d | 0d | start no earlier than 2018-03-08 | Hugo | 2.4h |  |
| 21 | 1.1.4.15 | Cargue de informacion Recaudo local - transferencias historicas |  | 0.3d | 2018-03-08 | 2018-03-08 | 20 |  |  | 136.1d | 0.4d |  | Hugo | 2.4h |  |
| 22 | 1.1.4.16 | Cargue de informacion Recaudo local - transferencia mensual |  | 0.3d | 2018-03-09 | 2018-03-09 | 21 |  |  | 135.7d |  | start no earlier than 2018-03-09 | Hugo | 2.4h |  |
| 23 | 1.1.4.17 | Edicion Recaudo local - transferencias |  | 3d | 2018-03-06 A | 2018-03-08 | 16 | 13% | 2.6d | 0.1d | 0d |  | Andres | 24h | 3.2h |
| 24 | 1.1.4.18 | Cerrar sesion |  | 1d | 2018-03-09 A | 2018-03-09 | 23 | 10% | 0.9d | 0d |  | start no earlier than 2018-03-09 | Andres | 8h | 0.8h |
| 25 | 1.1.5 | Instalacion APP |  | 1d | 2018-03-12 | 2018-03-12 | 24 |  |  | 0d |  |  | Hugo | 8h |  |
| 26 | 1.1.6 | Pruebas y certificacion |  | 1d | 2018-03-13 | 2018-03-13 | 25 |  |  | 0d |  |  | Hugo, Luis, William | 8h |  |

| ID | WBS | Task | Duration | Start | Finish | Predecessors | Total slack |
| --- | --- | --- | --- | --- | --- | --- | --- |
| 27 | 1.2 | **Iteracion 2** | 19d | 2018-03-14 | 2018-04-09 |  | 0d |
| 28 | 1.2.1 | Reunion defincion actividades | 1d | 2018-03-14 | 2018-03-14 | 26 | 0d |
| 29 | 1.2.2 | Elaboracion historias de usuario | 1d | 2018-03-15 | 2018-03-15 | 28 | 0d |
| 30 | 1.2.3 | **Construccion** | 15d | 2018-03-16 | 2018-04-05 |  | 0d |
| 31 | 1.2.3.1 | Solicitar usuario | 1d | 2018-03-16 | 2018-03-16 | 29 | 0d |
| 32 | 1.2.3.2 | Creacion usuario OT | 1d | 2018-03-19 | 2018-03-19 | 31 | 0d |
| 33 | 1.2.3.3 | Consulta de recaudo externo para OT | 3d | 2018-03-20 | 2018-03-22 | 32 | 0d |
| 34 | 1.2.3.4 | Consulta de recaudo local para OT | 2d | 2018-03-23 | 2018-03-26 | 33 | 0d |
| 35 | 1.2.3.5 | Calculo de deuda | 5d | 2018-03-16 | 2018-03-22 | 29 | 126d |
| 36 | 1.2.3.6 | Ejecutar proceso de calculo de deuda | 2d | 2018-03-27 | 2018-03-28 | 34 | 0d |
| 37 | 1.2.3.7 | Consulta de recaudo externo | 2d | 2018-03-29 | 2018-03-30 | 36 | 0d |
| 38 | 1.2.3.8 | Consulta de recaudo local | 1d | 2018-04-02 | 2018-04-02 | 37 | 0d |
| 39 | 1.2.3.9 | Consulta de transferencias | 1d | 2018-04-03 | 2018-04-03 | 38 | 0d |
| 40 | 1.2.3.10 | Consulta de deuda | 2d | 2018-04-04 | 2018-04-05 | 39 | 0d |
| 41 | 1.2.4 | Instalacion APP | 1d | 2018-04-06 | 2018-04-06 | 40 | 0d |
| 42 | 1.2.5 | Pruebas y certificacion | 1d | 2018-04-09 | 2018-04-09 | 41 | 0d |
| 43 | 1.3 | **Iteracion 3** | 19d | 2018-04-10 | 2018-05-04 |  | 0d |
| 44 | 1.3.1 | Reunion defincion actividades | 1d | 2018-04-10 | 2018-04-10 | 42 | 0d |
| 45 | 1.3.2 | Elaboracion historias de usuario | 1d | 2018-04-11 | 2018-04-11 | 44 | 0d |
| 46 | 1.3.3 | **Construccion** | 15d | 2018-04-12 | 2018-05-02 |  | 0d |
| 47 | 1.3.3.1 | Generacion de reportes basado en plantillas | 5d | 2018-04-12 | 2018-04-18 | 45 | 0d |
| 48 | 1.3.3.2 | Construir procedimientos de reportes deuda | 5d | 2018-04-12 | 2018-04-18 | 45 | 107d |
| 49 | 1.3.3.3 | Parametrizacion de plantillas | 3d | 2018-04-19 | 2018-04-23 | 47 | 0d |
| 50 | 1.3.3.4 | Administracion de parametros cargue de informacion | 2d | 2018-04-24 | 2018-04-25 | 49 | 0d |
| 51 | 1.3.3.5 | Pasar gestion a POLCA | 2d | 2018-04-26 | 2018-04-27 | 50 | 0d |
| 52 | 1.3.3.6 | Administracion de contactos | 3d | 2018-04-30 | 2018-05-02 | 51 | 0d |
| 53 | 1.3.4 | Instalacion APP | 1d | 2018-05-03 | 2018-05-03 | 52 | 0d |
| 54 | 1.3.5 | Pruebas y certificacion | 1d | 2018-05-04 | 2018-05-04 | 53 | 0d |

| ID | WBS | Task | Type | Duration | Start | Finish | Predecessors | Total slack |
| --- | --- | --- | --- | --- | --- | --- | --- | --- |
| 55 | 1.4 | **Iteracion 4** |  | 19d | 2018-05-07 | 2018-05-31 |  | 0d |
| 56 | 1.4.1 | Reunion defincion actividades |  | 1d | 2018-05-07 | 2018-05-07 | 54 | 0d |
| 57 | 1.4.2 | Elaboracion historias de usuario |  | 1d | 2018-05-08 | 2018-05-08 | 56 | 0d |
| 58 | 1.4.3 | **Construccion** |  | 15d | 2018-05-09 | 2018-05-29 |  | 0d |
| 59 | 1.4.3.1 | Registro de gestion |  | 3d | 2018-05-09 | 2018-05-11 | 57 | 0d |
| 60 | 1.4.3.2 | Proceso de notificaciones correo electronico |  | 5d | 2018-05-14 | 2018-05-18 | 59 | 0d |
| 61 | 1.4.3.3 | Consulta de notificaciones |  | 3d | 2018-05-21 | 2018-05-23 | 60 | 0d |
| 62 | 1.4.3.4 | Estado informacion municipio |  | 2d | 2018-05-24 | 2018-05-25 | 61 | 0d |
| 63 | 1.4.3.5 | Construir procedimientos de reportes gestion cartera |  | 2d | 2018-05-28 | 2018-05-29 | 62 | 0d |
| 64 | 1.4.4 | Instalacion APP |  | 1d | 2018-05-30 | 2018-05-30 | 63 | 0d |
| 65 | 1.4.5 | Pruebas y certificacion |  | 1d | 2018-05-31 | 2018-05-31 | 64 | 0d |
| 66 | 1.5 | **Iteracion 5** |  | 19d | 2018-06-01 | 2018-06-27 |  | 0d |
| 67 | 1.5.1 | Reunion defincion actividades |  | 1d | 2018-06-01 | 2018-06-01 | 65 | 0d |
| 68 | 1.5.2 | Elaboracion historias de usuario |  | 1d | 2018-06-04 | 2018-06-04 | 67 | 0d |
| 69 | 1.5.3 | **Construccion** |  | 15d | 2018-06-05 | 2018-06-25 |  | 0d |
| 70 | 1.5.3.1 | Generacion de oficios a OT |  | 3d | 2018-06-05 | 2018-06-07 | 68 | 0d |
| 71 | 1.5.3.2 | Administracion de parametros gestion cartera |  | 1d | 2018-06-08 | 2018-06-08 | 70 | 0d |
| 72 | 1.5.3.3 | Proceso de cargue de directorios y archivos |  | 5d | 2018-06-11 | 2018-06-15 | 71 | 0d |
| 73 | 1.5.3.4 | Consulta de oficios enviados |  | 2d | 2018-06-18 | 2018-06-19 | 72 | 0d |
| 74 | 1.5.3.5 | Consulta de oficios recibidos |  | 2d | 2018-06-20 | 2018-06-21 | 73 | 0d |
| 75 | 1.5.3.6 | Consulta de actas de visita |  | 2d | 2018-06-22 | 2018-06-25 | 74 | 0d |
| 76 | 1.5.4 | Instalacion APP | manual | 1d | 2018-06-26 | 2018-06-26 | 75 |  |
| 77 | 1.5.5 | Pruebas y certificacion | manual | 1d | 2018-06-27 | 2018-06-27 | 76 |  |
| 78 | 1.6 | **Iteracion 6** |  | 19d | 2018-06-28 | 2018-07-24 |  | 0d |
| 79 | 1.6.1 | Reunion defincion actividades |  | 1d | 2018-06-28 | 2018-06-28 | 77 | 0d |
| 80 | 1.6.2 | Elaboracion historias de usuario |  | 1d | 2018-06-29 | 2018-06-29 | 79 | 0d |

| ID | WBS | Task | Duration | Start | Finish | Predecessors | Total slack |
| --- | --- | --- | --- | --- | --- | --- | --- |
| 81 | 1.6.3 | **Construccion** | 15d | 2018-07-02 | 2018-07-20 |  | 0d |
| 82 | 1.6.3.1 | Generacion en SIMIT imposicion POLCA | 3d | 2018-07-02 | 2018-07-04 | 80 | 0d |
| 83 | 1.6.3.2 | Generacion en SIMIT imposicion SIMIT ZONAL | 1d | 2018-07-05 | 2018-07-05 | 82 | 0d |
| 84 | 1.6.3.3 | Cargue de informacion Imposicion POLCA | 2d | 2018-07-06 | 2018-07-09 | 83 | 0d |
| 85 | 1.6.3.4 | Cargue de informacion Imposicion SIMIT ZONAL | 2d | 2018-07-10 | 2018-07-11 | 84 | 0d |
| 86 | 1.6.3.5 | Consulta de imposicion para OT | 2d | 2018-07-12 | 2018-07-13 | 85 | 0d |
| 87 | 1.6.3.6 | Administracion de parametros | 2d | 2018-07-16 | 2018-07-17 | 86 | 0d |
| 88 | 1.6.3.7 | Construir procedimientos de reportes control correspondencia | 2d | 2018-07-18 | 2018-07-19 | 87 | 0d |
| 89 | 1.6.3.8 | Administracion de parametros control de oficios | 1d | 2018-07-20 | 2018-07-20 | 88 | 0d |
| 90 | 1.6.4 | Instalacion APP | 1d | 2018-07-23 | 2018-07-23 | 89 | 0d |
| 91 | 1.6.5 | Pruebas y certificacion | 1d | 2018-07-24 | 2018-07-24 | 90 | 0d |
| 92 | 1.7 | **Iteracion 7** | 19d | 2018-07-25 | 2018-08-20 |  | 0d |
| 93 | 1.7.1 | Reunion defincion actividades | 1d | 2018-07-25 | 2018-07-25 | 91 | 0d |
| 94 | 1.7.2 | Elaboracion historias de usuario | 1d | 2018-07-26 | 2018-07-26 | 93 | 0d |
| 95 | 1.7.3 | **Construccion** | 15d | 2018-07-27 | 2018-08-16 |  | 0d |
| 96 | 1.7.3.1 | Registro derecho de peticion | 3d | 2018-07-27 | 2018-07-31 | 94 | 0d |
| 97 | 1.7.3.2 | Cargue de adjuntos | 2d | 2018-08-01 | 2018-08-02 | 96 | 0d |
| 98 | 1.7.3.3 | Remitir por competencia | 2d | 2018-08-03 | 2018-08-06 | 97 | 0d |
| 99 | 1.7.3.4 | Reasignar caso | 2d | 2018-08-07 | 2018-08-08 | 98 | 0d |
| 100 | 1.7.3.5 | Atender derecho | 3d | 2018-08-09 | 2018-08-13 | 99 | 0d |
| 101 | 1.7.3.6 | Consulta derecho | 3d | 2018-08-14 | 2018-08-16 | 100 | 0d |
| 102 | 1.7.4 | Instalacion APP | 1d | 2018-08-17 | 2018-08-17 | 101 | 0d |
| 103 | 1.7.5 | Pruebas y certificacion | 1d | 2018-08-20 | 2018-08-20 | 102 | 0d |
| 104 | 1.8 | **Iteracion 8** | 19d | 2018-08-21 | 2018-09-14 |  | 0d |
| 105 | 1.8.1 | Reunion defincion actividades | 1d | 2018-08-21 | 2018-08-21 | 103 | 0d |
| 106 | 1.8.2 | Elaboracion historias de usuario | 1d | 2018-08-22 | 2018-08-22 | 105 | 0d |

| ID | WBS | Task | Duration | Start | Finish | Predecessors | Total slack |
| --- | --- | --- | --- | --- | --- | --- | --- |
| 107 | 1.8.3 | **Construccion** | 15d | 2018-08-23 | 2018-09-12 |  | 0d |
| 108 | 1.8.3.1 | Construir procedimientos de reportes derechos peticion | 3d | 2018-08-23 | 2018-08-27 | 106 | 0d |
| 109 | 1.8.3.2 | Generacion de oficios | 2d | 2018-08-28 | 2018-08-29 | 108 | 0d |
| 110 | 1.8.3.3 | Administracion de parametros derechos de peticion | 2d | 2018-08-30 | 2018-08-31 | 109 | 0d |
| 111 | 1.8.3.4 | Creacion de usuarios | 2d | 2018-09-03 | 2018-09-04 | 110 | 0d |
| 112 | 1.8.3.5 | Creacion de perfil / opciones | 3d | 2018-09-05 | 2018-09-07 | 111 | 0d |
| 113 | 1.8.3.6 | Actualizar mi perfil | 3d | 2018-09-10 | 2018-09-12 | 112 | 0d |
| 114 | 1.8.4 | Instalacion APP | 1d | 2018-09-13 | 2018-09-13 | 113 | 0d |
| 115 | 1.8.5 | Pruebas y certificacion | 1d | 2018-09-14 | 2018-09-14 | 114 | 0d |
